# Plan de Trabajo

Schedule from MS Project, 2022-03-17 to 2022-05-16, A marks actual dates.

## Calendars

- Estándar: Mon-Fri 09:00-13:00, 15:00-19:00; Sat-Sun 08:00-17:00.

## Resources

| Resource |
| --- |
| Equipo de desarrollo |
| Johan Carrillo |
| Mario Sinay |
| Jhensser Aguirre |
| Jorge Muñoz |
| Sara Ocalle |
| Sara Ovalle |
| E4 |

## Schedule

| ID | WBS | Task | Duration | Start | Finish | Predecessors | Complete | Remaining | Total slack | Resources | Work | Actual work |
| --- | --- | --- | --- | --- | --- | --- | --- | --- | --- | --- | --- | --- |
| 1 | 1 | **Proyecto de Sistema para Clinica Médica** | 63.25d | 2022-03-17 A | 2022-05-16 |  | 36% | 40.25d | 0d |  | 1522h | 460.92h |
| 2 | 1.1 | **Inicio** | 15.5d | 2022-03-17 A | 2022-03-31 A |  | 100% |  |  |  | 120h | 120h |
| 3 | 1.1.1 | Estudio de información de las instituciones médicas centralizadas en la historia clínica | 2d | 2022-03-17 A | 2022-03-18 A |  | 100% |  |  | Equipo de desarrollo | 16h | 16h |
| 4 | 1.1.2 | Estudio de la estructura organizacional de una clínica médica | 2d | 2022-03-17 A | 2022-03-18 A |  | 100% |  |  | Equipo de desarrollo | 16h | 16h |
| 5 | 1.1.3 | Estudio de factibilidad económico | 2d | 2022-03-17 A | 2022-03-18 A |  | 100% |  |  | Equipo de desarrollo | 16h | 16h |
| 6 | 1.1.4 | Acta de Constitución | 4d | 2022-03-21 A | 2022-03-24 A | 5 | 100% |  |  | Johan Carrillo | 32h | 32h |
| 7 | 1.1.5 | Realizar Dercas | 2d | 2022-03-25 A | 2022-03-28 A | 6 | 100% |  |  | Equipo de desarrollo | 16h | 16h |
| 8 | 1.1.6 | Reunión Inicial de Proyecto (Kick Off) | 3d | 2022-03-29 A | 2022-03-31 A | 7 | 100% |  |  | Equipo de desarrollo | 24h | 24h |
| 9 | 1.2 | **Planificación** | 20.75d | 2022-03-17 A | 2022-04-05 A |  | 100% |  |  |  | 136h | 136h |
| 10 | 1.2.1 | **Toma de Requerimientos** | 20.75d | 2022-03-17 A | 2022-04-05 A |  | 100% |  |  |  | 136h | 136h |
| 11 | 1.2.1.1 | Tomar Requerimiento Funcionales | 2d | 2022-04-01 A | 2022-04-04 A | 8 | 100% |  |  | Equipo de desarrollo | 16h | 16h |
| 12 | 1.2.1.2 | Tomar Requerimientos no Funcionales | 2d | 2022-03-17 A | 2022-03-18 A | 8 | 100% |  |  | Equipo de desarrollo | 16h | 16h |
| 13 | 1.2.1.3 | Definir Lenguaje de Programación | 1d | 2022-03-21 A | 2022-03-21 A | 12 | 100% |  |  | Equipo de desarrollo | 8h | 8h |
| 14 | 1.2.1.4 | Definir IDE a utilizar | 1d | 2022-03-17 A | 2022-03-17 A | 12 | 100% |  |  | Equipo de desarrollo | 8h | 8h |
| 15 | 1.2.1.5 | Definir Base de Datos | 1d | 2022-03-22 A | 2022-03-22 A | 13 | 100% |  |  | Johan Carrillo | 8h | 8h |
| 16 | 1.2.1.6 | Realizar Diagrama de Entidad Relación | 2d | 2022-03-23 A | 2022-03-24 A | 15 | 100% |  |  | Johan Carrillo | 16h | 16h |
| 17 | 1.2.1.7 | **Desarrollo de Diagramas UML** | 12.5d | 2022-03-25 A | 2022-04-05 A |  | 100% |  |  |  | 64h | 64h |
| 18 | 1.2.1.7.1 | Diagrama de Casos de uso | 1d | 2022-03-25 A | 2022-03-25 A | 16 | 100% |  |  | Mario Sinay | 8h | 8h |
| 19 | 1.2.1.7.2 | Diagrama de Clases | 3d | 2022-03-28 A | 2022-03-30 A | 18 | 100% |  |  | Jhensser Aguirre | 24h | 24h |
| 20 | 1.2.1.7.3 | Diagrama de Secuencias | 2d | 2022-03-31 A | 2022-04-01 A | 19 | 100% |  |  | Jorge Muñoz | 16h | 16h |
| 21 | 1.2.1.7.4 | Diagrama de Actividades | 2d | 2022-04-04 A | 2022-04-05 A | 20 | 100% |  |  | Sara Ovalle | 16h | 16h |
| 22 | 1.3 | **Ejecución** | 34.75d | 2022-03-29 A | 2022-05-01 | 9 | 26% | 25.78d | 16d |  | 858h | 204.92h |
| 23 | 1.3.1 | Realizar Mockups | 4d | 2022-03-29 A | 2022-04-03 A | 7 | 100% |  |  | Equipo de desarrollo | 32h | 32h |
| 24 | 1.3.2 | Implementacion del ambiente para desarrollo | 1d | 2022-03-29 A | 2022-03-29 A | 7 | 100% |  |  | Equipo de desarrollo | 8h | 8h |
| 25 | 1.3.3 | Realizar la Base de Datos | 5d | 2022-03-30 A | 2022-04-05 A | 24 | 100% |  |  | Johan Carrillo | 40h | 40h |

| ID | WBS | Task | Duration | Start | Finish | Predecessors | Complete | Remaining | Total slack | Resources | Work | Actual work |
| --- | --- | --- | --- | --- | --- | --- | --- | --- | --- | --- | --- | --- |
| 26 | 1.3.4 | **Desarrollar Backend** | 14.5d | 2022-04-06 A | 2022-04-19 | 25 | 27% | 10.59d | 28d |  | 370h | 88h |
| 27 | 1.3.4.1 | Creacion de conexión a la base de datos | 3d | 2022-04-06 A | 2022-04-08 A | 25 | 100% |  |  | Equipo de desarrollo | 24h | 24h |
| 28 | 1.3.4.2 | Configuracion de la base de datos | 3d | 2022-04-11 A | 2022-04-13 A | 27 | 100% |  |  | Equipo de desarrollo | 24h | 24h |
| 29 | 1.3.4.3 | Implemenacion de plugin y o librerias | 1d | 2022-04-09 A | 2022-04-09 | 27 | 50% | 0.5d | 38.5d | Equipo de desarrollo | 8h | 4h |
| 30 | 1.3.4.4 | **Crear servicios** | 5.25d | 2022-04-14 A | 2022-04-18 | 28 | 13% | 4.59d | 0d | Equipo de desarrollo | 306h | 36h |
| 31 | 1.3.4.4.1 | Login | 3d | 2022-04-14 A | 2022-04-18 A | 28 | 100% |  |  | Johan Carrillo | 24h | 24h |
| 32 | 1.3.4.4.2 | Inicio | 3d | 2022-04-14 A | 2022-04-16 | 28 | 25% | 2.25d | 2.25d | Johan Carrillo | 24h | 6h |
| 33 | 1.3.4.4.3 | Usuarios | 3d | 2022-04-14 | 2022-04-16 | 28 |  |  | 2.25d | Jhensser Aguirre | 24h |  |
| 34 | 1.3.4.4.4 | Citas | 5d | 2022-04-14 | 2022-04-18 | 28 |  |  | 0.25d | Mario Sinay | 40h |  |
| 35 | 1.3.4.4.5 | Pacientes | 4d | 2022-04-14 | 2022-04-17 | 28 |  |  | 1.25d | Jorge Muñoz | 32h |  |
| 36 | 1.3.4.4.6 | Empleados | 4d | 2022-04-14 | 2022-04-17 | 28 |  |  | 1.25d | Sara Ovalle | 32h |  |
| 37 | 1.3.4.4.7 | Inventario y Tienda | 5d | 2022-04-14 | 2022-04-18 | 28 |  |  | 0.25d | Johan Carrillo | 40h |  |
| 38 | 1.3.4.4.8 | Ramas médicas | 3d | 2022-04-14 | 2022-04-16 | 28 |  |  | 2.25d | Jhensser Aguirre; Sara Ovalle | 48h |  |
| 39 | 1.3.4.5 | Crear las conexiones con el frontend | 1d | 2022-04-19 | 2022-04-19 | 30 |  |  | 28d | Equipo de desarrollo | 8h |  |
| 40 | 1.3.5 | **Desarrollar Frontend** | 15.25d | 2022-04-14 A | 2022-04-28 |  | 9% | 13.82d | 0d |  | 352h | 36.92h |
| 41 | 1.3.5.1 | **Creacion de la vistas** | 9.25d | 2022-04-14 A | 2022-04-22 |  | 14% | 7.92d | 1d | Equipo de desarrollo | 240h | 36.92h |
| 42 | 1.3.5.1.1 | Login | 3d | 2022-04-20 A | 2022-04-22 A | 28 | 100% |  |  | Johan Carrillo | 24h | 24h |
| 43 | 1.3.5.1.2 | Inicio | 3d | 2022-04-20 A | 2022-04-22 | 28 | 25% | 2.25d | 1d | Johan Carrillo | 24h | 6h |
| 44 | 1.3.5.1.3 | Usuarios | 3d | 2022-04-14 | 2022-04-16 | 28 |  |  | 7.25d | Jhensser Aguirre | 24h |  |
| 45 | 1.3.5.1.4 | Citas | 5d | 2022-04-14 | 2022-04-18 | 28 |  |  | 5.25d | Mario Sinay | 40h |  |
| 46 | 1.3.5.1.5 | Pacientes | 3d | 2022-04-14 | 2022-04-16 | 28 |  |  | 7.25d | Jorge Muñoz | 24h |  |
| 47 | 1.3.5.1.6 | Empleados | 3d | 2022-04-14 | 2022-04-16 | 28 |  |  | 7.25d | Sara Ovalle | 24h |  |
| 48 | 1.3.5.1.7 | Inventario y Tienda | 5d | 2022-04-14 | 2022-04-18 | 28 |  |  | 5.25d | Johan Carrillo | 40h |  |
| 49 | 1.3.5.1.8 | Ramas médicas | 1d | 2022-04-14 | 2022-04-14 | 28 |  |  | 9.25d | Jhensser Aguirre; Sara Ovalle | 16h |  |
| 50 | 1.3.5.2 | Implementacion de los servicios | 5d | 2022-04-19 | 2022-04-23 | 30 |  |  | 0d | Equipo de desarrollo | 40h |  |
| 51 | 1.3.5.3 | Consumir los servicios del backend | 5d | 2022-04-23 | 2022-04-28 | 50, 41 |  |  | 0d | Equipo de desarrollo | 40h |  |
| 52 | 1.3.5.4 | Implementacion de un framework | 1d | 2022-04-23 | 2022-04-24 | 50 |  |  | 4d | Equipo de desarrollo | 8h |  |
| 53 | 1.3.5.5 | Consumir un framework | 3d | 2022-04-23 | 2022-04-26 | 50 |  |  | 2d | Equipo de desarrollo | 24h |  |

| ID | WBS | Task | Duration | Start | Finish | Predecessors | Total slack | Free slack | Resources | Work |
| --- | --- | --- | --- | --- | --- | --- | --- | --- | --- | --- |
| 54 | 1.3.6 | **Realizar Pruebas de Software** | 3d | 2022-04-28 | 2022-05-01 |  | 0d |  |  | 56h |
| 55 | 1.3.6.1 | **Pruebas Funcionales** | 1d | 2022-04-28 | 2022-04-29 |  | 18d |  |  | 32h |
| 56 | 1.3.6.1.1 | Pruebas Unitarias | 1d | 2022-04-28 | 2022-04-29 | 40 | 18d |  | Jhensser Aguirre | 8h |
| 57 | 1.3.6.1.2 | Pruebas de Integración | 1d | 2022-04-28 | 2022-04-29 | 40 | 18d |  | Mario Sinay; Johan Carrillo; Sara Ovalle | 24h |
| 58 | 1.3.6.2 | **Pruebas No Funcionales** | 3d | 2022-04-28 | 2022-05-01 |  | 0d |  |  | 24h |
| 59 | 1.3.6.2.1 | Performance Tesitng | 3d | 2022-04-28 | 2022-05-01 | 40 | 0d |  | Jorge Muñoz | 24h |
| 60 | 1.4 | **Monitoreo y Control** | 16d | 2022-05-01 | 2022-05-16 |  | 0d |  |  | 344h |
| 61 | 1.4.1 | **Desviaciones del Sistema** | 16d | 2022-05-01 | 2022-05-16 |  | 0d |  |  | 304h |
| 62 | 1.4.1.1 | Verificar Desviaciones del Sistema | 4d | 2022-05-01 | 2022-05-05 | 59 | 0d |  | Jhensser Aguirre | 32h |
| 63 | 1.4.1.2 | Documentar las Desviaciones del sistema | 2d | 2022-05-05 | 2022-05-07 | 62 | 0d |  | Jhensser Aguirre; Johan Carrillo | 32h |
| 64 | 1.4.1.3 | Corrección de las Desviaciones Encontradas | 10d | 2022-05-07 | 2022-05-16 | 63 | 0d |  | Jhensser Aguirre; Johan Carrillo; Mario Sinay | 240h |
| 65 | 1.4.2 | Verificación de estabilidad del sistema | 3d | 2022-05-05 | 2022-05-08 | 62 | 9d |  | Sara Ovalle | 24h |
| 66 | 1.4.3 | Test de la velocidad de respuesta del sistema | 1d | 2022-05-05 | 2022-05-06 | 62 | 4d | 0d | Jorge Muñoz | 8h |
| 67 | 1.4.4 | Correcciones en el plan de trabajo | 1d | 2022-05-06 | 2022-05-07 | 66 | 4d | 0d | Equipo de desarrollo | 8h |
| 68 | 1.5 | **Cierre** | 6d | 2022-05-07 | 2022-05-13 |  | 4d |  |  | 64h |
| 69 | 1.5.1 | Finalizar formalmente el proyecto | 3d | 2022-05-07 | 2022-05-10 | 67 | 4d | 0d | Equipo de desarrollo | 24h |
| 70 | 1.5.2 | Lecciones Aprendidas | 2d | 2022-05-10 | 2022-05-12 | 69 | 5d |  | Equipo de desarrollo | 16h |
| 71 | 1.5.3 | Acta de Cierre | 3d | 2022-05-10 | 2022-05-13 | 69 | 4d |  | Equipo de desarrollo | 24h |
